# DeviceLoan MVP WBS

Schedule from MS Project XML, 2026-11-02 to 2026-11-26, costs in ¥.

## Resources

| Resource | Rate |
| --- | --- |
| BA | 600 |
| CCB | 500 |
| Dev | 650 |
| PM | 800 |
| QA | 450 |

## Schedule

| ID | WBS | Task | Duration | Start | Finish | Predecessors | Work | Cost |
| --- | --- | --- | --- | --- | --- | --- | --- | --- |
| 1 | 1 | 1 启动 | 2.5d | 2026-11-02 | 2026-11-02 |  |  |  |
| 2 | 2 | 2 规划 | 4.5d | 2026-11-02 | 2026-11-02 |  |  |  |
| 3 | 3 | 3 执行 | 10.75d | 2026-11-02 | 2026-11-02 |  |  |  |
| 4 | 4 | 4 监控 | 8d | 2026-11-02 | 2026-11-02 |  |  |  |
| 5 | 5 | **5 收尾** | 1d | 2026-11-02 | 2026-11-02 |  |  |  |
| 6 | 1.1 | 商业论证与NPV初筛 | 0.5d | 2026-11-02 | 2026-11-02 |  | 4h | 3 |
| 7 | 1.2 | 项目章程 | 0.5d | 2026-11-02 | 2026-11-03 | 6 | 4h | 3 |
| 8 | 1.3 | 干系人登记与启动会 | 0.5d | 2026-11-03 | 2026-11-03 | 7 | 4h | 3 |
| 9 | 1.4 | 启动阶段评审 | 0.5d | 2026-11-03 | 2026-11-04 | 8 | 4h | 2.5 |
| 10 | 1.5 | 启动阶段收口与派单 | 0.5d | 2026-11-04 | 2026-11-04 | 9 | 4h | 4 |
| 11 | 2.1 | 范围说明书与需求追溯矩阵 | 0.75d | 2026-11-04 | 2026-11-04 | 9 | 6h | 4.5 |
| 12 | 2.2 | 架构与接口契约 | 0.75d | 2026-11-04 | 2026-11-05 | 11 | 6h | 4.5 |
| 13 | 2.3 | WBS与WBS词典 | 0.5d | 2026-11-05 | 2026-11-06 | 12 | 4h | 3 |
| 14 | 2.4 | 风险登记与质量计划 | 1d | 2026-11-05 | 2026-11-06 | 12 | 8h | 6 |
| 15 | 2.5 | 进度计划与关键路径分析 | 0.5d | 2026-11-06 | 2026-11-06 | 13, 10 | 4h | 4 |
| 16 | 2.6 | 成本基线与EVM口径 | 1d | 2026-11-06 | 2026-11-09 | 15 | 8h | 8 |
| 17 | 2.7 | 甘特图与Project XML | 0.5d | 2026-11-09 | 2026-11-10 | 16 | 4h | 4 |
| 18 | 2.8 | 规划基线评审 | 0.5d | 2026-11-10 | 2026-11-10 | 17, 14 | 4h | 2.5 |
| 19 | 3.1 | WP1账户与角色权限 | 2d | 2026-11-10 | 2026-11-12 | 18 | 16h | 11.38 |
| 20 | 3.2 | QA1验证账户与权限 | 0.75d | 2026-11-12 | 2026-11-13 | 19 | 6h | 3.38 |
| 21 | 3.3 | WP2设备目录与查询 | 1.25d | 2026-11-12 | 2026-11-13 | 19 | 10h | 8.12 |
| 22 | 3.4 | QA2验证设备查询 | 0.75d | 2026-11-13 | 2026-11-16 | 21 | 6h | 3.38 |
| 23 | 3.5 | WP3申请审批与冲突阻止 | 2d | 2026-11-13 | 2026-11-17 | 21 | 16h | 13 |
| 24 | 3.6 | QA3验证审批与冲突阻止 | 1d | 2026-11-17 | 2026-11-18 | 23 | 8h | 4.5 |
| 25 | 3.7 | WP4借出归还与逾期 | 1.5d | 2026-11-17 | 2026-11-19 | 23 | 12h | 9.75 |
| 26 | 3.8 | QA4验证借还生命周期 | 0.75d | 2026-11-19 | 2026-11-20 | 25 | 6h | 3.38 |
| 27 | 3.9 | WP5统计与审计日志 | 2.25d | 2026-11-19 | 2026-11-23 | 25 | 18h | 14.62 |
| 28 | 3.10 | QA5验证统计与审计 | 0.75d | 2026-11-23 | 2026-11-24 | 27 | 6h | 3.38 |
| 29 | 3.11 | 演示数据与演示脚本 | 1.25d | 2026-11-23 | 2026-11-24 | 27 | 10h | 8.12 |
| 30 | 3.12 | 执行期集成与演示准备 | 0.5d | 2026-11-24 | 2026-11-25 | 29 | 4h | 4 |
| 31 | 4.1 | EVM数据点1与偏差分析 | 0.5d | 2026-11-13 | 2026-11-16 | 21 | 4h | 4 |
| 32 | 4.2 | EVM数据点2与完工预测 | 0.5d | 2026-11-25 | 2026-11-25 | 31, 30 | 4h | 4 |
| 33 | 5.1 | 验收演示与UAT | 0.5d | 2026-11-25 | 2026-11-26 | 32 | 4h | 4 |
| 34 | 5.2 | 经验教训报告 | 0.5d | 2026-11-26 | 2026-11-26 | 33 | 4h | 3 |
| 35 | 5.3 | 最终报告与归档移交 | 0.5d | 2026-11-26 | 2026-11-26 | 33 | 4h | 4 |
